Schedule from MS Project, 2024-01-01 to 2024-03-07, status date 2024-03-06, costs in р., A marks actual dates.
Microsoft

## Calendars

- Стандартный: Mon-Fri 09:00-13:00, 14:00-18:00; Sat-Sun off.

## Resources

| Resource | Rate |
| --- | --- |
| Менеджер проекта | 500 |
| Проектировщик | 300 |
| Разработчик | 350 |
| Тестировщик | 250 |
| Заказчик |  |

## Schedule

| ID | WBS | Task | Type | Duration | Start | Finish | Predecessors | Complete | Remaining | Baseline start | Baseline finish | Baseline duration | Resources | Work | Actual work | Cost | Baseline cost | Actual cost |
| --- | --- | --- | --- | --- | --- | --- | --- | --- | --- | --- | --- | --- | --- | --- | --- | --- | --- | --- |
| 1 | 1 | **Проектирование информационной системы для администратора салона красоты «KYNSI».** |  | 49.12d? | 2024-01-01 A | 2024-03-07 |  | 98% | 1.02d? | 2024-01-01 | 2024-03-07 | 49.12d? |  | 453.6h | 444.6h | 182,400 | 182,400 | 177,900 |
| 2 | 1.1 | Начало проекта | milestone, manual | 0d | 2024-01-01 A | 2024-01-01 A |  | 100% |  | 2024-01-01 | 2024-01-01 | 0d |  |  |  |  |  |  |
| 3 | 1.2 | **Инициация проекта** |  | 14d | 2024-01-01 A | 2024-01-18 A | 2 | 100% |  | 2024-01-01 | 2024-01-18 | 14d |  | 133.6h | 133.6h | 54,400 | 54,400 | 54,400 |
| 4 | 1.2.1 | Составление заявки |  | 1d | 2024-01-01 A | 2024-01-01 A |  | 100% |  | 2024-01-01 | 2024-01-01 | 1d | Заказчик; Менеджер проекта [90%] | 8h | 8h | 3,600 | 3,600 | 3,600 |
| 5 | 1.2.2 | Разработка ТЭО |  | 6d | 2024-01-02 A | 2024-01-09 A | 4 | 100% |  | 2024-01-02 | 2024-01-09 | 6d | Менеджер проекта | 48h | 48h | 24,000 | 24,000 | 24,000 |
| 6 | 1.2.3 | Формирование и заключение договора |  | 4d | 2024-01-10 A | 2024-01-15 A | 5 | 100% |  | 2024-01-10 | 2024-01-15 | 4d | Менеджер проекта | 32h | 32h | 16,000 | 16,000 | 16,000 |
| 7 | 1.2.4 | Разработка устава проекта |  | 3d | 2024-01-16 A | 2024-01-18 A | 6, 4 | 100% |  | 2024-01-16 | 2024-01-18 | 3d | Заказчик; Менеджер проекта [90%] | 45.6h | 45.6h | 10,800 | 10,800 | 10,800 |
| 8 | 1.2.5 | Инициация завершена | milestone | 0d | 2024-01-18 A | 2024-01-18 A | 7 | 100% |  | 2024-01-18 | 2024-01-18 | 0d |  |  |  |  |  |  |
| 9 | 1.3 | **Планирование проекта** |  | 7d | 2024-01-19 A | 2024-01-29 A |  | 100% |  | 2024-01-19 | 2024-01-29 | 7d |  | 56h | 56h | 28,000 | 28,000 | 28,000 |
| 10 | 1.3.1 | Уточнение содержания задач проекта |  | 2d | 2024-01-19 A | 2024-01-22 A | 8 | 100% |  | 2024-01-19 | 2024-01-22 | 2d | Менеджер проекта | 16h | 16h | 8,000 | 8,000 | 8,000 |
| 11 | 1.3.2 | Оценка рисков |  | 2d | 2024-01-23 A | 2024-01-24 A | 10 | 100% |  | 2024-01-23 | 2024-01-24 | 2d | Менеджер проекта | 16h | 16h | 8,000 | 8,000 | 8,000 |
| 12 | 1.3.3 | Создание календарного плана |  | 2d | 2024-01-25 A | 2024-01-26 A | 11 | 100% |  | 2024-01-25 | 2024-01-26 | 2d | Менеджер проекта | 16h | 16h | 8,000 | 8,000 | 8,000 |
| 13 | 1.3.4 | Формирование команды проекта |  | 1d | 2024-01-29 A | 2024-01-29 A | 12 | 100% |  | 2024-01-29 | 2024-01-29 | 1d | Менеджер проекта | 8h | 8h | 4,000 | 4,000 | 4,000 |
| 14 | 1.3.5 | Планирование завершено | milestone | 0d | 2024-01-29 A | 2024-01-29 A | 13 | 100% |  | 2024-01-29 | 2024-01-29 | 0d |  |  |  |  |  |  |
| 15 | 1.4 | **Проектирование** |  | 9d | 2024-01-30 A | 2024-02-09 A |  | 100% |  | 2024-01-30 | 2024-02-09 | 9d |  | 72h | 72h | 29,600 | 29,600 | 29,600 |
| 16 | 1.4.1 | Анализ предметной области |  | 5d | 2024-01-30 A | 2024-02-05 A | 14 | 100% |  | 2024-01-30 | 2024-02-05 | 5d | Менеджер проекта | 40h | 40h | 20,000 | 20,000 | 20,000 |
| 17 | 1.4.2 | Моделирование бизнес процессов |  | 2d | 2024-02-06 A | 2024-02-07 A | 16 | 100% |  | 2024-02-06 | 2024-02-07 | 2d | Проектировщик | 16h | 16h | 4,800 | 4,800 | 4,800 |
| 18 | 1.4.3 | Создание базовых объектов |  | 2d | 2024-02-08 A | 2024-02-09 A | 17 | 100% |  | 2024-02-08 | 2024-02-09 | 2d | Проектировщик | 16h | 16h | 4,800 | 4,800 | 4,800 |
| 19 | 1.4.4 | Проектирование завершено | milestone | 0d | 2024-02-09 A | 2024-02-09 A | 18 | 100% |  | 2024-02-09 | 2024-02-09 | 0d |  |  |  |  |  |  |
| 20 | 1.5 | **Разработка** |  | 8d | 2024-02-12 A | 2024-02-22 A |  | 100% |  | 2024-02-12 | 2024-02-22 | 8d |  | 64h | 64h | 22,400 | 22,400 | 22,400 |
| 21 | 1.5.1 | Установка необходимого ПО |  | 1d | 2024-02-12 A | 2024-02-12 A | 19 | 100% |  | 2024-02-12 | 2024-02-12 | 1d | Разработчик | 8h | 8h | 2,800 | 2,800 | 2,800 |
| 22 | 1.5.2 | Разработка основных компонентов |  | 2d | 2024-02-13 A | 2024-02-14 A | 21 | 100% |  | 2024-02-13 | 2024-02-14 | 2d | Разработчик | 16h | 16h | 5,600 | 5,600 | 5,600 |
| 23 | 1.5.3 | Разработка функциональных механизмов |  | 5d | 2024-02-15 A | 2024-02-21 A | 22 | 100% |  | 2024-02-15 | 2024-02-21 | 5d | Разработчик | 40h | 40h | 14,000 | 14,000 | 14,000 |
| 24 | 1.5.4 | Разработка завершена | milestone, manual | 0d | 2024-02-22 A | 2024-02-22 A | 23 | 100% |  | 2024-02-22 | 2024-02-22 | 0d |  |  |  |  |  |  |

| ID | WBS | Task | Type | Duration | Start | Finish | Predecessors | Complete | Remaining | Baseline start | Baseline finish | Baseline duration | Total slack | Constraint | Resources | Work | Actual work | Cost | Baseline cost | Actual cost |
| --- | --- | --- | --- | --- | --- | --- | --- | --- | --- | --- | --- | --- | --- | --- | --- | --- | --- | --- | --- | --- |
| 25 | 1.6 | **Тестирование** |  | 8d | 2024-02-22 A | 2024-03-04 A |  | 100% |  | 2024-02-22 | 2024-03-04 | 8d |  |  |  | 64h | 64h | 16,000 | 16,000 | 16,000 |
| 26 | 1.6.1 | Тестирование созданных компонентов |  | 5d | 2024-02-27 A | 2024-03-04 A | 24 | 100% |  | 2024-02-27 | 2024-03-04 | 5d |  |  | Тестировщик | 40h | 40h | 10,000 | 10,000 | 10,000 |
| 27 | 1.6.2 | Создание документов тестирования |  | 3d | 2024-02-22 A | 2024-02-26 A | 23 | 100% |  | 2024-02-22 | 2024-02-26 | 3d |  |  | Тестировщик | 24h | 24h | 6,000 | 6,000 | 6,000 |
| 28 | 1.6.3 | Тестирование завершено | milestone | 0d | 2024-02-26 A | 2024-02-26 A | 27 | 100% |  | 2024-02-26 | 2024-02-26 | 0d |  |  |  |  |  |  |  |  |
| 29 | 1.7 | **Завершение** |  | 8d? | 2024-02-27 A | 2024-03-07 |  | 86% | 1.12d? | 2024-02-27 | 2024-03-07 | 8d? | 0d |  |  | 64h | 55h | 32,000 | 32,000 | 27,500 |
| 30 | 1.7.1 | Планирование завершения |  | 1d | 2024-02-27 A | 2024-02-27 A | 28 | 100% |  | 2024-02-27 | 2024-02-27 | 1d |  |  | Менеджер проекта | 8h | 8h | 4,000 | 4,000 | 4,000 |
| 31 | 1.7.2 | Создание документов |  | 1d? | 2024-02-28 A | 2024-02-28 A | 30 | 100% |  | 2024-02-28 | 2024-02-28 | 1d? |  |  | Менеджер проекта | 8h | 8h | 4,000 | 4,000 | 4,000 |
| 32 | 1.7.3 | Оценка результатов проекта и подведение итогов |  | 2d | 2024-02-29 A | 2024-03-01 A | 31 | 100% |  | 2024-02-29 | 2024-03-01 | 2d |  |  | Менеджер проекта | 16h | 16h | 8,000 | 8,000 | 8,000 |
| 33 | 1.7.4 | Подготовка итоговых документов |  | 2d | 2024-03-04 A | 2024-03-05 A | 32 | 100% |  | 2024-03-04 | 2024-03-05 | 2d |  |  | Менеджер проекта | 16h | 16h | 8,000 | 8,000 | 8,000 |
| 34 | 1.7.5 | Сдача проекта и его сопровождение |  | 2d | 2024-03-06 A | 2024-03-07 | 33 | 44% | 1.12d | 2024-03-06 | 2024-03-07 | 2d | 0d |  | Менеджер проекта | 16h | 7h | 8,000 | 8,000 | 3,500 |
| 35 | 1.7.6 | Проект завершен | milestone | 0d | 2024-03-07 | 2024-03-07 | 34 |  |  | 2024-03-07 | 2024-03-07 | 0d | 0d |  |  |  |  |  |  |  |
| 36 | 1.7.7 | Завершение проекта | milestone | 0d | 2024-03-07 | 2024-03-07 | 35 |  |  | 2024-03-07 | 2024-03-07 | 0d | 0d | start no earlier than 2024-02-26 |  |  |  |  |  |  |
